# ПГ

Schedule from MS Project, 2021-09-10 to 2022-05-24, costs in ₽.

## Calendars

- Стандартный: Mon-Fri 09:00-13:00, 14:00-18:00; Sat-Sun off. Exceptions (off unless hours are given): 2021-10-30 09:00-13:00, 14:00-18:00, 2021-11-13 09:00-13:00, 14:00-18:00, 2021-11-20 09:00-13:00, 14:00-18:00.

## Resources

| Resource | Rate |
| --- | --- |
| Аналитик | 120 |
| Дизайнер | 120 |
| Разработчик БД | 120 |
| Технический писатель | 120 |
| Программист | 150 |
| Тестировщик | 120 |
| Руководитель проекта | 170 |
| Оргтехника | 50000 |
| Лицензионное ПО | 30000 |
| Затраты на оплату электроэнергии |  |
| Затраты на связь |  |
| Расходные материалы |  |

## Schedule

| ID | WBS | Task | Duration | Start | Finish | Predecessors | Total slack | Free slack | Constraint | Resources | Work | Cost |
| --- | --- | --- | --- | --- | --- | --- | --- | --- | --- | --- | --- | --- |
| 4 | 1 | **Разработка ИС КМ** | 186d? | 2021-09-10 | 2022-05-24 |  | 0d |  |  | Лицензионное ПО; Оргтехника | 1432h | 273,326.91 |
| 5 | 1.1 | **Предпроектное обследование** | 36d? | 2021-09-10 | 2021-10-29 |  | 5d | 1d |  | Затраты на оплату электроэнергии [0.1%]; Затраты на связь [0.1%]; Расходные материалы [0.1%] | 272h | 34,600 |
| 6 | 1.1.1 | Анализ предметной области | 15d | 2021-09-10 | 2021-09-30 |  | 62d | 0d | start no earlier than 2021-09-10 | Аналитик [80%]; Руководитель проекта [20%] | 120h | 15,600 |
| 7 | 1.1.2 | Разработка концепции ИС | 5d | 2021-10-01 | 2021-10-07 | 6 | 5d | 1d | finish no earlier than 2020-10-07 | Аналитик [20%]; Технический писатель [70%]; Руководитель проекта [10%] | 40h | 5,000 |
| 8 | 1.1.3 | Разработка ТЗ | 14d? | 2021-10-12 | 2021-10-29 | 7 | 5d | 1d | start no earlier than 2021-10-12 | Аналитик [20%]; Технический писатель [70%]; Руководитель проекта [10%] | 112h | 14,000 |
| 9 | 1.2 | **Проектирование** | 31d? | 2021-11-01 | 2021-12-09 | 5 | 2d | 0d |  | Затраты на оплату электроэнергии [0.1%]; Затраты на связь [0.1%]; Расходные материалы [0.1%] | 232h | 29,264 |
| 10 | 1.2.1 | Моделирование бизнесс-процессов | 10d | 2021-11-01 | 2021-11-12 | 8, 7 | 4d | 1d | start no earlier than 2021-11-01 | Аналитик [50%]; Дизайнер [40%]; Разработчик БД [10%] | 80h | 9,600 |
| 11 | 1.2.2 | Проектирование БД | 5d | 2021-11-15 | 2021-11-19 | 10 | 3d | 1d | finish no earlier than 2021-11-19 | Разработчик БД [90%]; Руководитель проекта [10%] | 40h | 5,000 |
| 12 | 1.2.3 | Выбор и обоснование технологической разработки | 3d | 2021-11-22 | 2021-11-24 | 11 | 2d | 0d | finish no earlier than 2021-11-24 | Руководитель проекта [80%]; Аналитик [20%] | 24h | 3,840 |
| 13 | 1.2.4 | Разработка эскизного проекта | 11d? | 2021-11-25 | 2021-12-09 | 12 | 2d | 0d |  | Дизайнер [90%]; Программист [10%] | 88h | 10,824 |
| 14 | 1.3 | **Разработка рабочей документации** | 18d | 2021-12-10 | 2022-01-04 | 9 | 1d | 0d |  | Затраты на оплату электроэнергии [0.1%]; Затраты на связь [0.1%]; Расходные материалы [0.1%] | 148.8h | 17,856 |
| 15 | 1.3.1 | Словарь | 2d | 2021-12-10 | 2021-12-13 | 6SS | 5d | 3d | finish no earlier than 2021-12-13 | Технический писатель | 16h | 1,920 |
| 16 | 1.3.2 | Пояснительная записка | 5d | 2021-12-10 | 2021-12-16 | 13 | 2d | 0d | start no earlier than 2021-12-08 | Технический писатель | 40h | 4,800 |
| 17 | 1.3.3 | Описание применения | 4d | 2021-12-17 | 2021-12-22 | 16, 15 | 2d | 0d |  | Технический писатель | 32h | 3,840 |
| 18 | 1.3.4 | Руководство программиста | 3d | 2021-12-23 | 2021-12-27 | 17 | 2d | 0d |  | Технический писатель | 24h | 2,880 |
| 19 | 1.3.5 | Руководство оператора | 3d | 2021-12-28 | 2021-12-30 | 18 | 2d | 1d |  | Технический писатель | 24h | 2,880 |
| 20 | 1.3.6 | Массив входных и выходных данных | 2d | 2022-01-03 | 2022-01-04 | 19 | 1d | 0d | finish no earlier than 2022-01-04 | Технический писатель [90%]; Аналитик [10%] | 12.8h | 1,536 |
| 21 | 1.4 | **Разработка системы** | 78d? | 2022-01-05 | 2022-04-22 | 14 | 1d |  |  | Затраты на оплату электроэнергии [0.1%]; Затраты на связь [0.1%]; Расходные материалы [0.1%] | 611.64h | 87,581.09 |
| 22 | 1.4.1 | Разработка БД | 8d | 2022-01-05 | 2022-01-14 | 20 | 1d | 0d | finish no earlier than 2022-01-14 | Разработчик БД [90%]; Руководитель проекта [10%] | 63.42h | 7,901.09 |
| 23 | 1.4.2 | Разработка интерфейса | 27d | 2022-01-17 | 2022-02-22 | 22 | 1d | 0d | finish no earlier than 2022-02-22 | Дизайнер [50%]; Программист [40%]; Руководитель проекта [10%] | 204.22h | 28,080 |
| 24 | 1.4.3 | Кодирование | 43d? | 2022-02-23 | 2022-04-22 | 23 | 1d |  | start no earlier than 2022-02-23 | Программист | 344h | 51,600 |
| 25 | 1.5 | **Тестирование и откладка** | 21d | 2022-04-26 | 2022-05-24 | 21 | 0d |  |  | Затраты на оплату электроэнергии [0.1%]; Затраты на связь [0.1%]; Расходные материалы [0.1%] | 167.56h | 24,025.82 |
| 26 | 1.5.1 | Тестирование ИС | 6d | 2022-04-26 | 2022-05-03 | 24 | 0d |  | finish no earlier than 2022-05-03 | Тестировщик [90%]; Руководитель проекта [10%] | 47.56h | 5,925.82 |
| 27 | 1.5.2 | Работа по исправлению ошибок | 5d | 2022-05-04 | 2022-05-10 | 26 | 0d |  |  | Программист [95%]; Дизайнер [5%] | 40h | 5,940 |
| 28 | 1.5.3 | Повторное тестирование | 4d | 2022-05-11 | 2022-05-16 | 27 | 0d |  |  | Тестировщик [90%]; Руководитель проекта [10%] | 32h | 4,000 |
| 29 | 1.5.4 | Подготовка проекта к сдаче | 6d | 2022-05-17 | 2022-05-24 | 28 | 0d |  | finish no earlier than 2021-05-24 | Руководитель проекта | 48h | 8,160 |
